# ProjetSSI

Schedule from GanttProject, 2013-11-27 to 2014-02-28.

## Calendars

- Project calendar: Mon-Fri working; Sat-Sun off.

## Resources

| Resource |
| --- |
| Emile |
| Jean-Baptiste |
| Julien |
| Ouissem |
| Yves |

## Schedule

| ID | WBS | Task | Type | Duration | Start | Finish | Predecessors | Constraint | Resources |
| --- | --- | --- | --- | --- | --- | --- | --- | --- | --- |
| 1 | 1 | Rédaction des documents |  | 38d | 2013-11-27 | 2014-01-17 |  |  | Emile; Jean-Baptiste; Julien; Ouissem; Yves |
| 2 | 2 | Début du projet | milestone | 0d | 2014-01-20 | 2014-01-20 | 1 |  | Emile; Jean-Baptiste; Julien; Ouissem; Yves |
| 3 | 3 | Prise en compte des remarques sur les documents |  | 3d | 2014-01-20 | 2014-01-22 |  |  | Emile; Jean-Baptiste; Julien; Ouissem; Yves |
| 4 | 4 | **Développement proxy applicatif** |  | 26d | 2014-01-20 | 2014-02-24 | 2 |  | Emile; Jean-Baptiste; Julien; Ouissem |
| 5 | 4.1 | Développement structure proxy |  | 5d | 2014-01-20 | 2014-01-24 | 2 |  | Emile |
| 6 | 4.2 | Installation autorité sur client par admin |  | 2d | 2014-01-23 | 2014-01-24 | 2, 3 | start no earlier than 2014-01-22 | Julien |
| 7 | 4.3 | Installateur autorité sur client par client |  | 3d | 2014-01-23 | 2014-01-27 | 2, 3 |  | Emile; Ouissem |
| 8 | 4.4 | Etablissement d'une connexion chiffrée |  | 2d | 2014-01-27 | 2014-01-28 | 2, 5 |  | Emile; Ouissem |
| 9 | 4.5 | Transchiffrement des paquets |  | 4d | 2014-01-29 | 2014-02-03 | 8 |  | Emile; Ouissem |
| 10 | 4.6 | Génération d'un certificat |  | 3d | 2014-01-23 | 2014-01-27 | 2, 3 |  | Julien |
| 11 | 4.7 | Tests unitaires |  | 3d | 2014-02-04 | 2014-02-06 | 6, 8, 9, 10 |  | Jean-Baptiste |
| 12 | 4.8 | Rédaction de la documentation |  | 10d | 2014-01-27 | 2014-02-07 | 6 |  | Emile; Julien; Ouissem |
| 13 | 4.9 | Intégration des composants de l'application |  | 4d | 2014-02-07 | 2014-02-12 | 6, 9, 11 |  | Emile; Ouissem |
| 14 | 4.10 | Tests d'intégration |  | 3d | 2014-02-13 | 2014-02-17 | 11, 13 |  | Emile; Jean-Baptiste; Ouissem |
| 15 | 4.11 | Livraison |  | 1d | 2014-02-18 | 2014-02-18 | 14 |  | Jean-Baptiste |
| 16 | 4.12 | Prise en compte des remarques du Client |  | 4d | 2014-02-19 | 2014-02-24 | 15 |  | Emile; Julien; Ouissem |
| 17 | 5 | **Etude forge faux certificats** |  | 24d | 2014-01-20 | 2014-02-20 |  |  |  |
| 18 | 5.1 | Etat de l'art collisions MD5 |  | 8d | 2014-01-20 | 2014-01-29 | 2 |  | Emile; Jean-Baptiste; Julien; Ouissem; Yves |
| 19 | 5.2 | Rapport faisabilité collision |  | 3d | 2014-01-30 | 2014-02-03 | 18 |  | Ouissem; Yves |
| 20 | 5.3 | Développement application recherche collision |  | 5d | 2014-02-04 | 2014-02-10 | 19 |  | Emile; Jean-Baptiste; Julien; Ouissem; Yves |
| 21 | 5.4 | Lancement programme recherche collisions |  | 5d | 2014-02-11 | 2014-02-17 | 20 |  | Yves |
| 22 | 5.5 | Rédaction dossier récapitulatif |  | 10d | 2014-02-04 | 2014-02-17 | 19 |  | Emile; Jean-Baptiste; Julien; Ouissem; Yves |
| 23 | 5.6 | Livraison |  | 1d | 2014-02-18 | 2014-02-18 | 21, 22 |  | Jean-Baptiste |
| 24 | 5.7 | Prise en compte des remarques |  | 2d | 2014-02-19 | 2014-02-20 | 23 |  | Emile; Jean-Baptiste; Julien; Ouissem; Yves |
| 25 | 6 | Livraison finale |  | 1d | 2014-02-21 | 2014-02-21 | 3, 24 |  | Emile; Jean-Baptiste; Julien; Ouissem; Yves |
| 26 | 7 | Préparation de la revue |  | 4d | 2014-02-24 | 2014-02-27 | 25 |  | Emile; Jean-Baptiste; Julien; Ouissem; Yves |
| 27 | 8 | Revue de fin de projet |  | 1d | 2014-02-28 | 2014-02-28 | 26 | start no earlier than 2014-02-28 | Emile; Jean-Baptiste; Julien; Ouissem; Yves |
